| TaskID | TaskName | StartDate | EndDate | Duration | resources | Progress | info | DurationUnit | Predecessor |
| --- | --- | --- | --- | --- | --- | --- | --- | --- | --- |
| 1 | FASE 0: Recopilación de Requerimientos | 2025-08-18T08:00:00.000Z | 2025-09-12T17:00:00.000Z | 18 | Business Analyst Business Analyst 100, Product Owner Product Owner 100, Dev Team Dev Team 50 | 0 | Análisis y documentación de todos los requerimientos del proyecto | day |  |
| 2 | · Análisis de Stakeholders y Usuarios | 2025-08-18T08:00:00.000Z | 2025-08-22T17:00:00.000Z | 3 | Business Analyst Business Analyst 100 | 0 | Identificar usuarios objetivo (agricultores, técnicos, administradores), definir perfiles de usuario, entender necesidades de cada perfil | day |  |
| 3 | · Requerimientos Funcionales: Diagnóstico | 2025-08-18T08:00:00.000Z | 2025-08-25T17:00:00.000Z | 5 | Business Analyst Business Analyst 100, Product Owner Product Owner 50 | 0 | Flujo de diagnóstico, captura de imágenes, etapas de cultivo, síntomas, resultados esperados, precisión mínima del modelo IA | day |  |
| 4 | · Requerimientos Funcionales: Casos y Seguimiento | 2025-08-20T08:00:00.000Z | 2025-08-26T17:00:00.000Z | 5 | Business Analyst Business Analyst 100 | 0 | Gestión de casos, estados, logs, actualizaciones, seguimiento temporal, historial completo | day |  |
| 5 | · Requerimientos Funcionales: Marketplace | 2025-08-21T08:00:00.000Z | 2025-08-27T17:00:00.000Z | 5 | Business Analyst Business Analyst 100 | 0 | Categorías de productos, búsqueda, filtros, información de contacto, disponibilidad, precios | day |  |
| 6 | · Requerimientos Funcionales: Reportes y Mapas | 2025-08-22T08:00:00.000Z | 2025-08-28T17:00:00.000Z | 5 | Business Analyst Business Analyst 100 | 0 | Visualización geográfica, datos por departamento/municipio, producción, precios, integración con mapas | day |  |
| 7 | · Requerimientos de IA y Modelos | 2025-08-25T08:00:00.000Z | 2025-08-29T17:00:00.000Z | 3 | Business Analyst Business Analyst 100, Backend Dev Backend Dev 100 | 0 | Modelos TensorFlow requeridos, precisión mínima, enfermedades soportadas, tiempos de respuesta, formato de respuesta | day | 3FS |
| 8 | · Requerimientos de Integración | 2025-08-26T08:00:00.000Z | 2025-08-30T17:00:00.000Z | 3 | Dev Team Dev Team 100 | 0 | Firebase (Auth, Firestore, Storage), Google Maps API, APIs externas para datos de reportes, servicios de geolocalización | day |  |
| 9 | · Requerimientos No Funcionales | 2025-08-27T08:00:00.000Z | 2025-09-02T17:00:00.000Z | 4 | Business Analyst Business Analyst 100, Dev Team Dev Team 50 | 0 | Rendimiento (tiempo de respuesta), seguridad, escalabilidad, disponibilidad, usabilidad, accesibilidad | day |  |
| 10 | · Requerimientos de UI/UX | 2025-08-28T08:00:00.000Z | 2025-09-03T17:00:00.000Z | 4 | Business Analyst Business Analyst 100, Product Owner Product Owner 100 | 0 | Diseño responsive, patrones de navegación, accesibilidad, experiencia de usuario, guías de estilo | day |  |
| 11 | · Requerimientos Técnicos | 2025-08-29T08:00:00.000Z | 2025-09-04T17:00:00.000Z | 4 | Dev Team Dev Team 100, Backend Dev Backend Dev 100 | 0 | Plataformas objetivo (Android, iOS, Web), versiones mínimas, tecnologías, arquitectura, infraestructura | day |  |
| 12 | · Documentación de Requerimientos | 2025-09-01T08:00:00.000Z | 2025-09-08T17:00:00.000Z | 5 | Business Analyst Business Analyst 100 | 0 | Crear documento de requerimientos funcionales y no funcionales, casos de uso, diagramas | day | 3FS,4FS,5FS,6FS,7FS,9FS |
| 13 | · Validación con Stakeholders | 2025-09-09T08:00:00.000Z | 2025-09-12T17:00:00.000Z | 3 | Product Owner Product Owner 100, Business Analyst Business Analyst 100 | 0 | Revisión con stakeholders, ajustes según feedback, aprobación final de requerimientos | day | 12FS |
| 14 | FASE 1: Infraestructura y Autenticación | 2025-09-15T08:00:00.000Z | 2025-10-03T17:00:00.000Z | 15 | Dev Team Dev Team 100 | 100 | Fase completada al 100% | day | 1FS |
| 15 | · Sistema de Autenticación | 2025-09-15T08:00:00.000Z | 2025-09-19T17:00:00.000Z | 5 | Dev Team Dev Team 100 | 100 | Login, registro, Google Sign-In, gestión de sesiones | day |  |
| 16 | · Configuración Firebase | 2025-09-15T08:00:00.000Z | 2025-09-17T17:00:00.000Z | 3 | Dev Team Dev Team 100 | 100 | Firebase Auth, Firestore, Storage configurados | day |  |
| 17 | · Infraestructura Base | 2025-09-18T08:00:00.000Z | 2025-10-03T17:00:00.000Z | 10 | Dev Team Dev Team 100 | 100 | Rutas, navegación, tema, modelos de datos base | day | 16FS |
| 27 | FASE 2: Funcionalidades Core | 2025-10-06T08:00:00.000Z | 2025-10-31T17:00:00.000Z | 20 | Dev Team Dev Team 100 | 85 | Fase en progreso al 85% | day | 14FS |
| 28 | · Pantalla Principal (Landing Page) | 2025-10-06T08:00:00.000Z | 2025-10-10T17:00:00.000Z | 5 | Dev Team Dev Team 100 | 100 | Diseño responsive, widgets de noticias y clima | day |  |
| 29 | · Sistema de Diagnóstico (UI/UX) | 2025-10-06T08:00:00.000Z | 2025-10-20T17:00:00.000Z | 10 | Dev Team Dev Team 100 | 95 | Wizard paso a paso, captura de imágenes, ubicación GPS | day |  |
| 30 | · Gestión de Casos de Diagnóstico | 2025-10-21T08:00:00.000Z | 2025-10-27T17:00:00.000Z | 5 | Dev Team Dev Team 100 | 100 | Creación, visualización y gestión de casos | day | 29FS |
| 31 | · Sistema de Mapas y Geolocalización | 2025-10-13T08:00:00.000Z | 2025-10-29T17:00:00.000Z | 11 | Dev Team Dev Team 100 | 100 | Mapa de Nicaragua con GeoJSON, Google Maps integrado | day | 28FS |
| 32 | · Marketplace de Productos | 2025-10-21T08:00:00.000Z | 2025-10-27T17:00:00.000Z | 5 | Dev Team Dev Team 100 | 70 | UI completa, pendiente integración con Firestore | day |  |
| 33 | · Sistema de Reportes | 2025-10-21T08:00:00.000Z | 2025-10-27T17:00:00.000Z | 5 | Dev Team Dev Team 100 | 70 | UI completa con datos mockup, pendiente datos reales | day | 31FS |
| 34 | · Perfil de Usuario | 2025-10-30T08:00:00.000Z | 2025-10-31T17:00:00.000Z | 2 | Dev Team Dev Team 100 | 100 | Vista de perfil e historial de diagnósticos | day |  |
| 35 | · Panel de Administración | 2025-10-30T08:00:00.000Z | 2025-11-05T17:00:00.000Z | 5 | Dev Team Dev Team 100 | 100 | Gestión de usuarios y casos del sistema | day |  |
| 36 | FASE 3: Desarrollo e Integración de IA | 2025-11-06T08:00:00.000Z | 2025-11-28T17:00:00.000Z | 16 | Backend Dev Backend Dev 100, Dev Team Dev Team 100 | 0 | Desarrollo del modelo de aprendizaje, entrenamiento e integración con Flutter | day | 27FS |
| 37 | · Desarrollo/Preparación del Modelo | 2025-11-06T08:00:00.000Z | 2025-11-12T17:00:00.000Z | 5 | Backend Dev Backend Dev 100 | 0 | Preparar o mejorar modelo TensorFlow existente, estructura del modelo, arquitectura | day |  |
| 38 | · Entrenamiento del Modelo | 2025-11-13T08:00:00.000Z | 2025-11-19T17:00:00.000Z | 5 | Backend Dev Backend Dev 100 | 0 | Entrenamiento con dataset, validación, ajuste de hiperparámetros, evaluación de precisión | day | 37FS |
| 39 | · Configurar Backend API | 2025-11-13T08:00:00.000Z | 2025-11-17T17:00:00.000Z | 3 | Backend Dev Backend Dev 100 | 0 | Flask/FastAPI, servidor Python, endpoint POST /api/diagnose | day |  |
| 40 | · Integrar Modelo en Backend | 2025-11-20T08:00:00.000Z | 2025-11-24T17:00:00.000Z | 3 | Backend Dev Backend Dev 100 | 0 | Integrar modelo entrenado en API, procesamiento de imágenes, formato de respuesta | day | 38FS,39FS |
| 41 | · Integración con Flutter | 2025-11-25T08:00:00.000Z | 2025-11-28T17:00:00.000Z | 3 | Dev Team Dev Team 100 | 0 | Modificar diagnostico_service.dart, llamadas HTTP a API, manejo de respuestas, compresión de imágenes | day | 40FS |
| 42 | FASE 4: Pruebas y Despliegue | 2025-12-02T08:00:00.000Z | 2025-12-20T17:00:00.000Z | 13 | Dev Team Dev Team 100, QA Team QA Team 100 | 0 | Pruebas básicas, optimizaciones finales y despliegue | day | 36FS |
| 43 | · Pruebas de Integración IA | 2025-12-02T08:00:00.000Z | 2025-12-06T17:00:00.000Z | 3 | QA Team QA Team 100 | 0 | Probar diagnóstico con imágenes reales, validar resultados del modelo | day |  |
| 44 | · Pruebas Generales de la App | 2025-12-05T08:00:00.000Z | 2025-12-11T17:00:00.000Z | 5 | QA Team QA Team 100 | 0 | Pruebas de funcionalidades principales, flujos completos, corrección de bugs | day |  |
| 45 | · Optimizaciones Finales | 2025-12-09T08:00:00.000Z | 2025-12-13T17:00:00.000Z | 3 | Dev Team Dev Team 100 | 0 | Ajustes de rendimiento, corrección de errores encontrados, mejoras menores | day |  |
| 46 | · Despliegue Backend | 2025-12-12T08:00:00.000Z | 2025-12-13T17:00:00.000Z | 2 | Backend Dev Backend Dev 100 | 0 | Desplegar API en Cloud Run/Lambda, configurar dominio | day |  |
| 47 | · Builds y Despliegue Final | 2025-12-16T08:00:00.000Z | 2025-12-20T17:00:00.000Z | 3 | Dev Team Dev Team 100 | 0 | Build APK/AAB Android, iOS, desplegar web en Firebase | day | 44FS,45FS |
| 48 | · Milestone: Entrega Final | 2025-12-20T17:00:00.000Z | 2025-12-20T17:00:00.000Z | 0 | Dev Team Dev Team 100 | 0 | Proyecto completado y listo para producción | day | 47FS |

Links (from, to):
- 8 12
- 13 17
